# Movimiento Ecologista

Schedule from MS Project, 2018-05-14 to 2018-08-02, costs in $, A marks actual dates.

## Calendars

- Estándar: Mon-Fri 09:00-13:00, 15:00-19:00; Sat-Sun off.

## Resources

| Resource | Rate |
| --- | --- |
| Líder de proyecto | 190.12 |
| Analista | 147.39 |
| Diseñador | 149.97 |
| Programador 1 | 159.51 |
| Programador 2 | 159.51 |
| Programador 3 | 159.51 |
| Programador 4 | 159.51 |
| Téster | 130.42 |
| Bolígrafo | 3 |
| Computadora (Desgaste de equipo) | 8 |
| Hojas de papel | 1 |
| Internet | 13 |
| Luz | 5 |
| Mobiliario (Desgaste) | 5 |
| Transporte | 20 |

## Schedule

| ID | WBS | Task | Type | Duration | Start | Finish | Predecessors | Complete | Remaining | Actual finish | Constraint | Resources | Work | Actual work | Cost | Actual cost |
| --- | --- | --- | --- | --- | --- | --- | --- | --- | --- | --- | --- | --- | --- | --- | --- | --- |
| 1 | 1 | **MPPP** |  | 58.5d | 2018-05-14 09:00 A | 2018-08-02 13:00 |  | 51% | 28.58d |  |  |  | 873h | 369h | 139,118.24 | 59,698.42 |
| 2 | 1.1 | **Inicio** |  | 1d | 2018-05-14 09:00 A | 2018-05-14 19:00 |  | 100% |  | 2018-05-14 10:00 |  |  | 1h | 1h | 222.12 | 222.12 |
| 3 | 1.1.1 | Acta de inicio | manual | 1h | 2018-05-14 09:00 A | 2018-05-14 10:00 A |  | 100% |  |  | start no earlier than 2018-05-14 09:00 | Líder de proyecto; Bolígrafo; Hojas de papel; Transporte; Computadora (Desgaste de equipo) | 1h | 1h | 222.12 | 222.12 |
| 4 | 1.2 | **Planeación** |  | 8d | 2018-05-15 09:00 A | 2018-05-24 19:00 | 2 | 100% |  | 2018-05-23 11:00 |  |  | 36h | 36h | 6,996.28 | 6,996.28 |
| 5 | 1.2.1 | Presupuesto | manual | 1d | 2018-05-15 09:00 A | 2018-05-15 19:00 A | 3 | 100% |  |  | finish no earlier than 2018-05-15 19:00 | Líder de proyecto; Computadora (Desgaste de equipo) [80%]; Luz [80%]; Mobiliario (Desgaste) [80%] | 8h | 8h | 1,538.95 | 1,538.95 |
| 6 | 1.2.2 | Estudio de roles | manual | 1d | 2018-05-16 09:00 A | 2018-05-16 19:00 A | 5 | 100% |  |  |  | Líder de proyecto; Computadora (Desgaste de equipo); Luz; Mobiliario (Desgaste) | 8h | 8h | 1,538.95 | 1,538.95 |
| 7 | 1.2.3 | Selección del ciclo de vida | manual | 2h | 2018-05-17 09:00 A | 2018-05-17 11:00 A | 6 | 100% |  |  |  | Líder de proyecto; Computadora (Desgaste de equipo); Luz; Mobiliario (Desgaste) | 2h | 2h | 398.24 | 398.24 |
| 8 | 1.2.4 | Declaración del alcance | manual | 2h | 2018-05-18 09:00 A | 2018-05-18 11:00 A | 7 | 100% |  |  |  | Líder de proyecto; Computadora (Desgaste de equipo); Luz; Mobiliario (Desgaste) | 2h | 2h | 398.24 | 398.24 |
| 9 | 1.2.5 | Estructura de desglose de trabajo (EDT) | manual | 1d | 2018-05-21 09:00 A | 2018-05-21 19:00 A | 8 | 100% |  |  | start no earlier than 2018-05-21 09:00 | Líder de proyecto; Computadora (Desgaste de equipo) [200%]; Luz [200%]; Mobiliario (Desgaste) [200%]; Internet [200%] | 8h | 8h | 1,551.95 | 1,551.95 |
| 10 | 1.2.6 | Plan de comunicación | manual | 6h | 2018-05-22 09:00 A | 2018-05-22 17:00 A | 9 | 100% |  |  | start no earlier than 2018-05-22 09:00 | Líder de proyecto; Computadora (Desgaste de equipo); Luz; Mobiliario (Desgaste) | 6h | 6h | 1,158.71 | 1,158.71 |
| 11 | 1.2.7 | Póliticas de calidad | manual | 2h | 2018-05-23 09:00 A | 2018-05-23 11:00 A | 10 | 100% |  |  | start no earlier than 2018-05-23 09:00 | Líder de proyecto; Computadora (Desgaste de equipo) [90%]; Internet [90%]; Luz [90%]; Mobiliario (Desgaste) [90%] | 2h | 2h | 411.24 | 411.24 |
| 12 | 1.3 | **Análisis** |  | 6d | 2018-05-25 09:00 A | 2018-06-01 19:00 A | 4 | 100% |  |  |  |  | 28h | 28h | 4,278.22 | 4,278.22 |
| 13 | 1.3.1 | Análisis de provedores | manual | 4h | 2018-05-25 09:00 A | 2018-05-25 13:00 A | 11 | 100% |  |  |  | Analista; Computadora (Desgaste de equipo) [200%]; Internet [200%]; Luz [200%]; Mobiliario (Desgaste) [200%] | 4h | 4h | 620.57 | 620.57 |
| 14 | 1.3.2 | Evaluar provedores de requerimientos | manual | 4h | 2018-05-28 09:00 A | 2018-05-28 13:00 A | 13 | 100% |  |  |  | Analista; Bolígrafo [200%]; Hojas de papel [200%] | 4h | 4h | 593.57 | 593.57 |
| 15 | 1.3.3 | Selección de la técnica de recolección de datos | manual | 2h | 2018-05-29 09:00 A | 2018-05-29 11:00 A | 14 | 100% |  |  |  | Analista; Computadora (Desgaste de equipo); Luz; Mobiliario (Desgaste) | 2h | 2h | 312.78 | 312.78 |
| 16 | 1.3.4 | Aplicación de a técnica de recolección de datos seleccionada | manual | 2h | 2018-05-30 09:00 A | 2018-05-30 11:00 A | 15 | 100% |  |  |  | Analista; Bolígrafo; Computadora (Desgaste de equipo); Hojas de papel; Internet; Luz; Mobiliario (Desgaste) | 2h | 2h | 329.78 | 329.78 |
| 17 | 1.3.5 | Especificación de requisitos de software (ERS) | manual | 2d | 2018-05-31 09:00 A | 2018-06-01 19:00 A | 16 | 100% |  |  |  | Diseñador; Bolígrafo [200%]; Computadora (Desgaste de equipo) [200%]; Hojas de papel [200%]; Luz [200%]; Mobiliario (Desgaste) [200%] | 16h | 16h | 2,421.52 | 2,421.52 |
| 18 | 1.4 | **Diseño** |  | 7d | 2018-06-04 09:00 A | 2018-06-12 19:00 A | 12 | 100% |  |  |  |  | 48h | 48h | 7,283.54 | 7,283.54 |
| 19 | 1.4.1 | Diagramas UML | manual | 1d | 2018-06-04 09:00 A | 2018-06-04 19:00 A | 17 | 100% |  |  |  | Diseñador; Computadora (Desgaste de equipo) [200%]; Luz [200%]; Mobiliario (Desgaste) [200%] | 8h | 8h | 1,217.76 | 1,217.76 |
| 20 | 1.4.2 | Diagramas de la Base de datos | manual | 20h | 2018-06-05 09:00 A | 2018-06-07 13:00 A | 19 | 100% |  |  |  | Diseñador; Computadora (Desgaste de equipo) [200%]; Luz [200%]; Mobiliario (Desgaste) [200%]; Internet [200%] | 20h | 20h | 3,030.39 | 3,030.39 |
| 21 | 1.4.3 | Mapa de navegación | manual | 4h | 2018-06-08 09:00 A | 2018-06-08 13:00 A | 20 | 100% |  |  |  | Computadora (Desgaste de equipo); Diseñador; Luz; Mobiliario (Desgaste) | 4h | 4h | 617.88 | 617.88 |
| 22 | 1.4.4 | Bocetos | manual | 2d | 2018-06-11 09:00 A | 2018-06-12 19:00 A | 21, 20 | 100% |  |  |  | Computadora (Desgaste de equipo); Luz; Mobiliario (Desgaste); Diseñador | 16h | 16h | 2,417.51 | 2,417.51 |
| 23 | 1.5 | **Codificación** |  | 25d | 2018-06-13 09:00 A | 2018-07-17 19:00 | 18 | 46% | 13.54d |  |  |  | 672h | 256h | 107,314.72 | 40,918.26 |
| 24 | 1.5.1 | Base de datos | manual | 2d | 2018-06-13 09:00 A | 2018-06-14 19:00 A | 22 | 100% |  |  |  | Programador 1; Computadora (Desgaste de equipo); Internet; Luz; Mobiliario (Desgaste) | 16h | 16h | 2,583.16 | 2,583.16 |
| 25 | 1.5.2 | Maquetación | manual | 2d | 2018-06-15 09:00 A | 2018-06-18 19:00 A | 24, 22 | 100% |  |  |  | Programador 4; Computadora (Desgaste de equipo); Internet; Luz; Mobiliario (Desgaste) | 16h | 16h | 2,583.16 | 2,583.16 |
| 26 | 1.5.3 | Frontend | manual | 10d | 2018-06-19 09:00 A | 2018-07-02 19:00 | 25 | 70% | 3d |  |  | Programador 1; Programador 2; Programador 3; Programador 4; Computadora (Desgaste de equipo); Internet; Luz; Mobiliario (Desgaste) | 320h | 224h | 51,074.2 | 35,751.94 |
| 27 | 1.5.4 | Backend | manual | 10d | 2018-07-04 09:00 | 2018-07-17 19:00 | 26 |  |  |  |  | Programador 1; Programador 2; Programador 3; Programador 4 | 320h |  | 51,074.2 |  |

| ID | WBS | Task | Type | Duration | Start | Finish | Predecessors | Resources | Work | Cost |
| --- | --- | --- | --- | --- | --- | --- | --- | --- | --- | --- |
| 28 | 1.6 | **Pruebas** |  | 7d | 2018-07-18 09:00 | 2018-07-26 19:00 | 23 |  | 56h | 7,365.52 |
| 29 | 1.6.1 | Pruebas unitarias | manual | 3d | 2018-07-18 09:00 | 2018-07-20 19:00 | 27 | Luz; Mobiliario (Desgaste); Téster; Computadora (Desgaste de equipo); Internet | 24h | 3,161.08 |
| 30 | 1.6.2 | Pruebas de módulo | manual | 4d | 2018-07-23 09:00 | 2018-07-26 19:00 | 29 | Computadora (Desgaste de equipo); Internet; Luz; Mobiliario (Desgaste); Téster | 32h | 4,204.44 |
| 31 | 1.7 | **Implementación** |  | 4d | 2018-07-27 09:00 | 2018-08-01 19:00 | 28 |  | 28h | 4,849.36 |
| 32 | 1.7.1 | Selección del hosting | manual | 1d | 2018-07-27 09:00 | 2018-07-27 19:00 | 30 | Computadora (Desgaste de equipo); Internet; Luz; Diseñador; Mobiliario (Desgaste) | 8h | 1,230.76 |
| 33 | 1.7.2 | Subir el sitio web | manual | 4h | 2018-07-30 09:00 | 2018-07-30 13:00 | 32 | Téster; Computadora (Desgaste de equipo); Internet; Luz; Mobiliario (Desgaste) | 4h | 552.68 |
| 34 | 1.7.3 | Pruebas de sistema | manual | 2d | 2018-07-31 09:00 | 2018-08-01 19:00 | 33 | Líder de proyecto; Bolígrafo; Hojas de papel; Transporte | 16h | 3,065.92 |
| 35 | 1.8 | **Cierre del proyecto** |  | 0.25d | 2018-08-02 11:00 | 2018-08-02 13:00 | 31 |  | 4h | 808.48 |
| 36 | 1.8.1 | Carta de aceptación | manual | 2h | 2018-08-02 11:00 | 2018-08-02 13:00 | 33 | Líder de proyecto; Bolígrafo; Hojas de papel; Transporte | 2h | 404.24 |
| 37 | 1.8.2 | Acta de cierre del proyecto | manual | 2h | 2018-08-02 11:00 | 2018-08-02 13:00 | 33 | Líder de proyecto; Bolígrafo; Hojas de papel; Transporte | 2h | 404.24 |
